# Proyecto Trascendental

Schedule from MS Project, 2020-11-09 to 2021-01-28, costs in $, A marks actual dates.

## Calendars

- Calendario Trascendental: Mon-Fri 06:00-12:00, 13:00-18:00; Sat-Sun off. Exceptions (off unless hours are given): 2020-11-16 (Independencia de Cartagena), 2020-12-08 (Día de la Inmaculada Concepción), 2020-12-15 to 2021-01-25 (Vacaciones).

## Resources

| Resource | Rate | Cost per use |
| --- | --- | --- |
| Laura Tatiana Gómez Castillo | 5750 |  |
| Lady Daniela Díaz Sánchez | 5750 |  |
| Yáxul Santiago Cárdenas Hincapié | 5750 |  |
| Brayan Gómez López | 5750 |  |
| Paulo Sebastian Correa Espinosa | 5750 |  |
| Computador |  | 1000000 |
| Internet |  | 80000 |
| Escritorio |  | 200000 |
| Silla |  | 100000 |
| Servicio de Luz |  |  |

## Schedule

| ID | WBS | Task | Type | Duration | Start | Finish | Predecessors | Complete | Remaining | Total slack | Free slack | Constraint | Resources | Work | Actual work | Cost | Actual cost |
| --- | --- | --- | --- | --- | --- | --- | --- | --- | --- | --- | --- | --- | --- | --- | --- | --- | --- |
| 1 | 1 | **Proyecto Trascendental** |  | 36d? | 2020-11-09 A | 2021-01-28 |  | 76% | 8.74d? | 0d |  |  |  | 773.25h | 773.25h | 39,034,887.5 | 38,954,887.5 |
| 2 | 1.1 | **Análisis** |  | 5.25d? | 2020-11-09 A | 2020-11-13 |  | 94% | 0.32d? | 30.75d |  |  |  | 115h | 115h | 14,501,250 | 14,461,250 |
| 3 | 1.1.1 | **Componente Metodológico** |  | 2.62d | 2020-11-09 A | 2020-11-11 |  | 99% | 0d | 33.38d |  |  |  | 45h | 45h | 8,538,750 | 8,538,750 |
| 4 | 1.1.1.1 | INICIO | milestone | 0d | 2020-11-09 | 2020-11-09 |  |  |  | 36d |  |  |  |  |  |  |  |
| 5 | 1.1.1.2 | Nombre del proyecto |  | 2h | 2020-11-09 A | 2020-11-09 A | 4 | 100% |  |  |  |  | Yáxul Santiago Cárdenas Hincapié; Computador; Escritorio; Internet; Silla | 2h | 2h | 1,391,500 | 1,391,500 |
| 6 | 1.1.1.3 | Objetivo general |  | 3h | 2020-11-09 A | 2020-11-09 A | 5SS | 100% |  |  |  |  | Laura Tatiana Gómez Castillo; Lady Daniela Díaz Sánchez; Computador [200%]; Escritorio [200%]; Internet [200%]; Silla [200%] | 6h | 6h | 1,414,500 | 1,414,500 |
| 7 | 1.1.1.4 | Objetivos específicos |  | 2h | 2020-11-10 A | 2020-11-10 A | 6 | 100% |  |  |  |  | Paulo Sebastian Correa Espinosa; Computador; Escritorio; Internet; Silla | 2h | 2h | 1,391,500 | 1,391,500 |
| 8 | 1.1.1.5 | Planteamiento del problema |  | 8h | 2020-11-10 A | 2020-11-10 A | 7SS | 100% |  |  |  |  | Lady Daniela Díaz Sánchez; Laura Tatiana Gómez Castillo; Yáxul Santiago Cárdenas Hincapié; Computador [300%]; Escritorio [300%]; Internet [300%]; Silla [300%] | 24h | 24h | 1,518,000 | 1,518,000 |
| 9 | 1.1.1.6 | Alcance del proyecto |  | 3h | 2020-11-10 A | 2020-11-10 A | 8 | 100% |  |  |  |  | Yáxul Santiago Cárdenas Hincapié; Brayan Gómez López; Computador [200%]; Escritorio [200%]; Internet [200%]; Silla [200%] | 6h | 6h | 1,414,500 | 1,414,500 |
| 10 | 1.1.1.7 | Justificación |  | 5h | 2020-11-10 A | 2020-11-11 A | 9SS | 100% |  |  |  |  | Laura Tatiana Gómez Castillo; Computador; Escritorio; Internet; Silla | 5h | 5h | 1,408,750 | 1,408,750 |
| 11 | 1.1.2 | **Logo** |  | 0.25d | 2020-11-10 A | 2020-11-10 A |  | 100% |  |  |  |  |  | 2h | 2h | 1,391,500 | 1,391,500 |
| 12 | 1.1.2.1 | Definición de color y estilo |  | 2h | 2020-11-10 A | 2020-11-10 A | 10SS | 100% |  |  |  |  | Yáxul Santiago Cárdenas Hincapié; Computador; Escritorio; Internet; Silla | 2h | 2h | 1,391,500 | 1,391,500 |
| 13 | 1.1.3 | **Levantamiento de información** |  | 3d? | 2020-11-10 A | 2020-11-13 |  | 92% | 0.24d? | 30.75d |  |  |  | 68h | 68h | 4,571,000 | 4,531,000 |
| 14 | 1.1.3.1 | Entrevistas |  | 3d | 2020-11-10 A | 2020-11-13 A | 12 | 100% |  |  |  |  | Lady Daniela Díaz Sánchez; Computador; Escritorio; Internet; Silla | 24h | 24h | 1,518,000 | 1,518,000 |
| 15 | 1.1.3.2 | Personal Operativo |  | 1.5d? | 2020-11-10 A | 2020-11-11 A | 14SS | 100% |  |  |  |  | Lady Daniela Díaz Sánchez; Computador; Escritorio; Internet; Silla | 12h | 12h | 1,449,000 | 1,449,000 |
| 16 | 1.1.3.3 | Encuestas |  | 2d | 2020-11-10 A | 2020-11-12 A | 15SS | 100% |  |  |  |  | Laura Tatiana Gómez Castillo; Yáxul Santiago Cárdenas Hincapié; Computador [200%]; Escritorio [200%]; Internet [200%]; Silla [200%] | 32h | 32h | 1,564,000 | 1,564,000 |
| 17 | 1.1.3.4 | Personal Administrativo |  | 2d? | 2020-11-10 A | 2020-11-12 A | 16SS | 100% |  |  |  |  |  |  |  |  |  |
| 18 | 1.1.3.5 | **Reunión sustentación** |  | 0.75d | 2020-11-12 | 2020-11-12 |  |  |  | 31d |  |  |  |  |  |  |  |
| 19 | 1.1.3.5.1 | Reunión sustentación 1 |  | 6h | 2020-11-12 | 2020-11-12 | 17 |  |  | 31d |  | start no earlier than 2020-11-09 |  |  |  |  |  |
| 20 | 1.1.3.6 | FIN DEL ANALISIS | milestone | 0d | 2020-11-12 | 2020-11-12 | 17 |  |  | 31.75d | 0d |  | Servicio de Luz |  |  | 40,000 |  |
| 21 | 1.2 | **Planeación** |  | 31.75d | 2020-11-12 A | 2021-01-28 |  | 72% | 8.95d | 0d |  |  |  | 658.25h | 658.25h | 24,533,637.5 | 24,493,637.5 |
| 22 | 1.2.1 | **Mapa de procesos** |  | 1.5d | 2020-11-12 A | 2020-11-13 |  | 99% | 0d | 30.25d |  |  |  | 53h | 53h | 3,064,750 | 3,064,750 |
| 23 | 1.2.1.1 | INICIO | milestone | 0d | 2020-11-12 | 2020-11-12 | 20 |  |  | 31.75d |  |  |  |  |  |  |  |
| 24 | 1.2.1.2 | Mapa de procesos |  | 5h | 2020-11-12 A | 2020-11-12 A | 17 | 100% |  |  |  |  | Laura Tatiana Gómez Castillo; Computador; Escritorio; Internet; Silla | 5h | 5h | 1,408,750 | 1,408,750 |
| 25 | 1.2.1.3 | Diagrama de flujo de proceso BPMN |  | 1.5d | 2020-11-12 A | 2020-11-13 A | 24SS | 100% |  |  |  |  | Lady Daniela Díaz Sánchez; Laura Tatiana Gómez Castillo; Paulo Sebastian Correa Espinosa; Yáxul Santiago Cárdenas Hincapié; Computador [400%]; Escritorio [400%]; Internet [400%]; Silla [400%] | 48h | 48h | 1,656,000 | 1,656,000 |

Notes:
- 17: Personal Administrativo de la empresa Disser Ingenieria S.A.S.

| ID | WBS | Task | Type | Duration | Start | Finish | Predecessors | Complete | Total slack | Constraint | Resources | Work | Actual work | Cost | Actual cost |
| --- | --- | --- | --- | --- | --- | --- | --- | --- | --- | --- | --- | --- | --- | --- | --- |
| 26 | 1.2.2 | **Informe de Requerimientos (Estándar IEEE 830)** |  | 5d | 2020-11-13 A | 2020-11-20 A |  | 100% |  |  |  | 144h | 144h | 6,356,700 | 6,356,700 |
| 27 | 1.2.2.1 | Requerimientos funcionales |  | 2.62d | 2020-11-13 A | 2020-11-18 A | 25 | 100% |  |  | Yáxul Santiago Cárdenas Hincapié; Laura Tatiana Gómez Castillo; Computador [200%]; Escritorio [200%]; Internet [200%]; Silla [200%] | 48h | 48h | 1,664,700 | 1,664,700 |
| 28 | 1.2.2.2 | Requerimientos No funcionales |  | 3d | 2020-11-13 A | 2020-11-18 A | 27SS | 100% |  |  | Brayan Gómez López; Lady Daniela Díaz Sánchez; Computador [200%]; Escritorio [200%]; Internet [200%]; Silla [200%] | 48h | 48h | 1,656,000 | 1,656,000 |
| 29 | 1.2.2.3 | Especificaciones de casos de uso |  | 1d | 2020-11-18 A | 2020-11-19 A | 28 | 100% |  |  | Lady Daniela Díaz Sánchez; Laura Tatiana Gómez Castillo; Computador [200%]; Escritorio [200%]; Internet [200%]; Silla [200%] | 16h | 16h | 1,472,000 | 1,472,000 |
| 30 | 1.2.2.4 | Formato de Caso de Uso Extendido |  | 2d | 2020-11-18 A | 2020-11-20 A | 29SS | 100% |  |  | Brayan Gómez López; Yáxul Santiago Cárdenas Hincapié; Computador [200%]; Escritorio [200%]; Internet [200%]; Silla [200%] | 32h | 32h | 1,564,000 | 1,564,000 |
| 31 | 1.2.3 | **Versionamiento** |  | 5d | 2020-11-13 A | 2020-11-20 A |  | 100% |  |  |  | 160h | 160h | 2,300,000 | 2,300,000 |
| 32 | 1.2.3.1 | GitHub |  | 5d | 2020-11-13 A | 2020-11-20 A | 27SS | 100% |  |  | Brayan Gómez López; Lady Daniela Díaz Sánchez; Laura Tatiana Gómez Castillo; Yáxul Santiago Cárdenas Hincapié; Computador [400%]; Escritorio [400%]; Internet [400%]; Silla [400%] | 160h | 160h | 2,300,000 | 2,300,000 |
| 33 | 1.2.4 | **Modelo Entidad Relación** |  | 3d | 2020-11-20 A | 2020-11-24 A |  | 100% |  |  |  | 72h | 72h | 4,554,000 | 4,554,000 |
| 34 | 1.2.4.1 | MER |  | 1d | 2020-11-20 A | 2020-11-20 A | 32 | 100% |  |  | Brayan Gómez López; Computador; Escritorio; Internet; Silla | 8h | 8h | 1,426,000 | 1,426,000 |
| 35 | 1.2.4.2 | Modelo Relación |  | 2d | 2020-11-20 A | 2020-11-24 A | 34 | 100% |  |  | Lady Daniela Díaz Sánchez; Laura Tatiana Gómez Castillo; Yáxul Santiago Cárdenas Hincapié; Computador [300%]; Escritorio [300%]; Internet [300%]; Silla [300%] | 48h | 48h | 1,656,000 | 1,656,000 |
| 36 | 1.2.4.3 | Diccionario de datos |  | 2d | 2020-11-20 A | 2020-11-24 A | 35SS | 100% |  |  | Lady Daniela Díaz Sánchez; Laura Tatiana Gómez Castillo; Computador [200%]; Escritorio [200%]; Internet [200%]; Silla [200%] | 16h | 16h | 1,472,000 | 1,472,000 |
| 37 | 1.2.5 | **Diagramas UML** |  | 1.25d | 2020-11-24 A | 2020-11-25 A |  | 100% |  |  |  | 20h | 20h | 2,875,000 | 2,875,000 |
| 38 | 1.2.5.1 | Diagrama de clases |  | 5h | 2020-11-24 A | 2020-11-24 A | 36 | 100% |  |  | Brayan Gómez López; Yáxul Santiago Cárdenas Hincapié; Computador [200%]; Escritorio [200%]; Internet [200%]; Silla [200%] | 10h | 10h | 1,437,500 | 1,437,500 |
| 39 | 1.2.5.2 | Diagrama de despliegue |  | 5h | 2020-11-24 A | 2020-11-25 A | 38 | 100% |  |  | Laura Tatiana Gómez Castillo; Yáxul Santiago Cárdenas Hincapié; Computador [200%]; Escritorio [200%]; Internet [200%]; Silla [200%] | 10h | 10h | 1,437,500 | 1,437,500 |
| 40 | 1.2.6 | **Prototipo no funcional** |  | 10d | 2020-11-13 A | 2020-11-25 A |  | 100% |  |  |  | 193.25h | 193.25h | 3,871,187.5 | 3,871,187.5 |
| 41 | 1.2.6.1 | HTML |  | 1.4w | 2020-11-13 A | 2020-11-25 A | 32SS | 100% |  |  | Lady Daniela Díaz Sánchez; Laura Tatiana Gómez Castillo; Computador [200%]; Escritorio [200%]; Internet [200%]; Silla [200%] | 87h | 87h | 1,880,250 | 1,880,250 |
| 42 | 1.2.6.2 | CSS |  | 1.68w | 2020-11-13 A | 2020-11-25 A | 41SS | 100% |  |  | Brayan Gómez López; Yáxul Santiago Cárdenas Hincapié; Computador [200%]; Escritorio [200%]; Internet [200%]; Silla [200%] | 106.25h | 106.25h | 1,990,937.5 | 1,990,937.5 |
| 43 | 1.2.7 | **Diagrama de gantt** |  | 3d | 2020-11-25 A | 2020-11-27 A |  | 100% |  |  |  |  |  |  |  |
| 44 | 1.2.7.1 | Project |  | 3d | 2020-11-25 A | 2020-11-27 A | 42 | 100% |  |  |  |  |  |  |  |
| 45 | 1.2.8 | **Normalizacion** |  | 1d | 2020-11-27 A | 2020-11-30 A |  | 100% |  |  |  | 16h | 16h | 1,472,000 | 1,472,000 |
| 46 | 1.2.8.1 | (1FN), (2FN), (3FN) |  | 8h | 2020-11-27 A | 2020-11-30 A | 44 | 100% |  |  | Lady Daniela Díaz Sánchez; Laura Tatiana Gómez Castillo; Computador [200%]; Escritorio [200%]; Internet [200%]; Silla [200%] | 16h | 16h | 1,472,000 | 1,472,000 |
| 47 | 1.2.9 | **Reunión sustentación** |  | 0.75d | 2020-11-30 | 2020-12-01 |  |  | 0d |  |  |  |  | 40,000 |  |
| 48 | 1.2.9.1 | Reunión sustentación 1 |  | 6h | 2020-11-30 | 2020-12-01 | 46 |  | 0d | start no earlier than 2020-11-09 |  |  |  |  |  |
| 49 | 1.2.9.2 | FIN DE PLANEACION | milestone | 0d | 2020-12-01 | 2020-12-01 | 48 |  | 0d |  | Servicio de Luz |  |  | 40,000 |  |

| ID | WBS | Task | Type | Duration | Start | Finish | Predecessors | Total slack |
| --- | --- | --- | --- | --- | --- | --- | --- | --- |
| 50 | 1.2.10 | **Ejecución** |  | 15.5d | 2020-12-01 | 2021-01-28 |  | 0d |
| 51 | 1.2.10.1 | **Base de Datos** |  | 4d | 2020-12-01 | 2020-12-04 |  | 0d |
| 52 | 1.2.10.1.1 | Construcción de la Base de Datos |  | 1d | 2020-12-01 | 2020-12-01 | 49 | 0d |
| 53 | 1.2.10.1.2 | Datos insertados en la Base de Datos |  | 2d | 2020-12-01 | 2020-12-03 | 52 | 0d |
| 54 | 1.2.10.1.3 | Consultas y Joins en la Base de Datos |  | 8h | 2020-12-03 | 2020-12-04 | 53 | 0d |
| 55 | 1.2.10.2 | **Codificación y manejo de CRUD** |  | 6.5d | 2020-12-04 | 2020-12-11 |  | 0d |
| 56 | 1.2.10.2.1 | Conexión base de datos |  | 1d | 2020-12-04 | 2020-12-04 | 54 | 0d |
| 57 | 1.2.10.2.2 | Crud funcional módulos del sistema |  | 1.5d | 2020-12-04 | 2020-12-07 | 56 | 0d |
| 58 | 1.2.10.2.3 | Caso de uso 001 |  | 2d | 2020-12-07 | 2020-12-10 | 57 | 0d |
| 59 | 1.2.10.2.4 | Caso de uso n.. |  | 2d | 2020-12-10 | 2020-12-11 | 58 | 0d |
| 60 | 1.2.10.3 | **Evaluación** |  | 5d | 2020-12-11 | 2021-01-28 |  | 0d |
| 61 | 1.2.10.3.1 | Modelo De Calidad |  | 3d | 2020-12-11 | 2021-01-26 | 59 | 0d |
| 62 | 1.2.10.3.2 | **Construcción de manuales** |  | 2d | 2021-01-27 | 2021-01-28 |  | 0d |
| 63 | 1.2.10.3.2.1 | Usuario |  | 1d | 2021-01-27 | 2021-01-27 | 61 | 0d |
| 64 | 1.2.10.3.2.2 | Operación |  | 1d | 2021-01-27 | 2021-01-28 | 63 | 0d |
| 65 | 1.2.10.3.2.3 | FIN DE EJECUCION | milestone | 0d | 2021-01-28 | 2021-01-28 | 64 | 0d |
